Schedule from MS Project, 2017-08-07 to 2017-10-10, A marks actual dates.

## Calendars

- 标准: Mon-Fri 08:00-12:00, 13:00-17:00; Sat-Sun off.

## Resources

| Resource |
| --- |
| 陈小桂 |
| 王大鹏 |
| 梁廷森 |
| 付陈林 |
| 文栎波 |
| 张籽娟 |
| 李凯 |
| 郭婷 |
| 杨建 |
| 买晨雨 |

## Schedule

| ID | WBS | Task | Type | Duration | Start | Finish | Predecessors | Complete | Remaining | Total slack | Deadline | Resources | Work | Actual work |
| --- | --- | --- | --- | --- | --- | --- | --- | --- | --- | --- | --- | --- | --- | --- |
| 1 | 1 | **会员系统开发** |  | 41d | 2017-08-15 A | 2017-10-10 |  | 79% | 8.63d | 0d |  |  | 792h | 600h |
| 2 | 1.1 | **业务功能开发** |  | 41d | 2017-08-15 A | 2017-10-10 |  | 84% | 6.43d | 0d |  |  | 576h | 464h |
| 3 | 1.1.1 | 储值购买反结算 | manual | 1d | 2017-08-15 A | 2017-08-15 A |  | 100% |  |  | 2017-08-15 | 陈小桂; 李凯 | 8h | 8h |
| 4 | 1.1.2 | 卡券购买反结算 | manual | 1d | 2017-08-16 A | 2017-08-16 A | 3 | 100% |  |  |  | 陈小桂 | 8h | 8h |
| 5 | 1.1.3 | 卡包购买反结算 | manual | 1d | 2017-08-17 A | 2017-08-17 A | 4 | 100% |  |  |  | 陈小桂 | 8h | 8h |
| 6 | 1.1.4 | 储值、卡券、卡包购买打印结算单 | manual | 2d | 2017-08-17 A | 2017-08-18 A |  | 100% |  |  |  | 张籽娟 | 16h | 16h |
| 7 | 1.1.5 | 结算不开票 | manual | 1d | 2017-08-18 A | 2017-08-18 A | 5 | 100% |  |  |  | 陈小桂 | 8h | 8h |
| 8 | 1.1.6 | **结算增加规则** |  | 4d | 2017-08-22 A | 2017-08-25 A | 7 | 100% |  |  |  | 陈小桂 | 88h | 88h |
| 9 | 1.1.6.1 | 结算完后会员升级(生成会员级别调整记录) | manual | 2d | 2017-08-22 A | 2017-08-23 A |  | 100% |  |  |  | 陈小桂 | 16h | 16h |
| 10 | 1.1.6.2 | **根据会员规则结算** |  | 2d | 2017-08-24 A | 2017-08-25 A |  | 100% |  |  |  | 陈小桂 | 40h | 40h |
| 11 | 1.1.6.2.1 | 结算时增加积分累计规则 | manual | 1d | 2017-08-24 A | 2017-08-24 A |  | 100% |  |  |  | 陈小桂 | 8h | 8h |
| 12 | 1.1.6.2.2 | 结算时增加积分抵现规则 | manual | 1d | 2017-08-25 A | 2017-08-25 A |  | 100% |  |  |  | 陈小桂 | 8h | 8h |
| 13 | 1.1.6.2.3 | 结算时增加优惠折扣策略 | manual | 1d | 2017-08-25 A | 2017-08-25 A |  | 100% |  |  |  | 陈小桂 | 8h | 8h |
| 14 | 1.1.7 | **购买规则处理** |  | 1d | 2017-08-24 A | 2017-08-24 A |  | 100% |  |  |  |  | 8h | 8h |
| 15 | 1.1.7.1 | 储值完后会员升级(生成会员级别调整记录) | manual | 1d | 2017-08-24 A | 2017-08-24 A |  | 100% |  |  |  | 陈小桂 | 8h | 8h |
| 16 | 1.1.8 | **操作界面改造** |  | 27d | 2017-08-15 A | 2017-09-20 A |  | 100% |  |  |  |  | 188h | 188h |
| 17 | 1.1.8.1 | 客户微信端--储值明细改造 | manual | 1d | 2017-08-30 A | 2017-08-30 A |  | 100% |  |  |  | 郭婷; 张籽娟 | 16h | 16h |
| 18 | 1.1.8.2 | 客户微信端--积分明细改造 | manual | 1d | 2017-08-31 A | 2017-08-31 A |  | 100% |  |  |  | 郭婷; 张籽娟 | 16h | 16h |
| 19 | 1.1.8.3 | 卡券界面改造 | manual | 3d | 2017-09-18 A | 2017-09-20 A |  | 100% |  |  |  | 郭婷; 李凯 | 48h | 48h |
| 20 | 1.1.8.4 | 后台添加临时会员 | manual | 1d | 2017-08-15 A | 2017-08-15 A |  | 100% |  |  |  | 梁廷森 | 8h | 8h |
| 21 | 1.1.8.5 | 服务类型可多选处理 | manual | 2d | 2017-09-04 A | 2017-09-05 A |  | 100% |  |  |  | 陈小桂 | 16h | 16h |
| 22 | 1.1.8.6 | 新增活动方案(基础数据) | manual | 0.5d | 2017-09-05 A | 2017-09-05 A |  | 100% |  |  |  | 张籽娟 | 4h | 4h |
| 23 | 1.1.8.7 | 卡券设置调整 | manual | 0.5d | 2017-09-05 A | 2017-09-05 A |  | 100% |  |  |  | 张籽娟 | 4h | 4h |
| 24 | 1.1.8.8 | 会员储值设置调整 | manual | 0.5d | 2017-09-06 A | 2017-09-06 A |  | 100% |  |  |  | 张籽娟 | 4h | 4h |
| 25 | 1.1.8.9 | 会员套餐设置调整 | manual | 0.5d | 2017-09-06 A | 2017-09-06 A |  | 100% |  |  |  | 张籽娟 | 4h | 4h |
| 26 | 1.1.8.10 | 新增会员及临时会员的时候增加车主姓名及手机号字段 | manual | 0.5d | 2017-09-07 A | 2017-09-07 A |  | 100% |  |  |  | 梁廷森 | 4h | 4h |
| 27 | 1.1.8.11 | 增加是否同时消费处理 | manual | 1d | 2017-09-06 A | 2017-09-06 A |  | 100% |  |  |  | 陈小桂 | 8h | 8h |
| 28 | 1.1.8.12 | 卡券购买时---增加积分抵扣功能 | manual | 1d | 2017-09-07 A | 2017-09-07 A |  | 100% |  |  |  | 陈小桂 | 8h | 8h |
| 29 | 1.1.8.13 | 会员业务查看调整 | manual | 0.5d | 2017-09-07 A | 2017-09-07 A |  | 100% |  |  |  | 张籽娟 | 4h | 4h |
| 30 | 1.1.8.14 | 卡券销售记录调整 | manual | 0.5d | 2017-09-08 A | 2017-09-08 A |  | 100% |  |  |  | 张籽娟 | 4h | 4h |
| 31 | 1.1.8.15 | 卡券发放记录调整 | manual | 0.5d | 2017-09-08 A | 2017-09-08 A |  | 100% |  |  |  | 张籽娟 | 4h | 4h |
| 32 | 1.1.8.16 | 卡券使用记录调整 | manual | 0.5d | 2017-09-11 A | 2017-09-11 A |  | 100% |  |  |  | 张籽娟 | 4h | 4h |
| 33 | 1.1.8.17 | 卡包销售记录调整 | manual | 0.5d | 2017-09-11 A | 2017-09-11 A |  | 100% |  |  |  | 张籽娟 | 4h | 4h |
| 34 | 1.1.8.18 | 会员储值记录调整 | manual | 0.5d | 2017-09-06 A | 2017-09-06 A |  | 100% |  |  |  | 李凯 | 4h | 4h |
| 35 | 1.1.8.19 | 会员购买记录调整 | manual | 0.5d | 2017-09-06 A | 2017-09-06 A |  | 100% |  |  |  | 李凯 | 4h | 4h |
| 36 | 1.1.8.20 | 会员储值记录调整 | manual | 0.5d | 2017-09-07 A | 2017-09-07 A |  | 100% |  |  |  | 李凯 | 4h | 4h |
| 37 | 1.1.8.21 | 会员消费记录调整 | manual | 0.5d | 2017-09-07 A | 2017-09-07 A |  | 100% |  |  |  | 李凯 | 4h | 4h |
| 38 | 1.1.8.22 | 会员扫码记录调整 | manual | 0.5d | 2017-09-08 A | 2017-09-08 A |  | 100% |  |  |  | 李凯 | 4h | 4h |
| 39 | 1.1.8.23 | 卡券PC端扫码记录调整 | manual | 0.5d | 2017-09-08 A | 2017-09-08 A |  | 100% |  |  |  | 李凯 | 4h | 4h |
| 40 | 1.1.8.24 | 会员冻结记录调整 | manual | 0.5d | 2017-09-11 A | 2017-09-11 A |  | 100% |  |  |  | 李凯 | 4h | 4h |

| ID | WBS | Task | Type | Duration | Start | Finish | Predecessors | Complete | Remaining | Actual start | Total slack | Resources | Work | Actual work |
| --- | --- | --- | --- | --- | --- | --- | --- | --- | --- | --- | --- | --- | --- | --- |
| 41 | 1.1.9 | **储值、卡券、卡包 界面整合** |  | 5d | 2017-08-28 | 2017-09-01 | 8 | 83% | 0.83d | 2017-09-14 |  | 陈小桂 | 96h | 48h |
| 42 | 1.1.9.1 | 确定菜单名称 | manual | 1d | 2017-09-14 A | 2017-09-14 A |  | 100% |  |  |  | 陈小桂 | 8h | 8h |
| 43 | 1.1.9.2 | 界面再细化一下 | manual | 1d | 2017-09-14 A | 2017-09-14 A |  | 100% |  |  |  | 陈小桂; 郭婷 | 16h | 16h |
| 44 | 1.1.9.3 | 界面测试 | manual | 1d | 2017-09-14 A | 2017-09-14 A |  | 100% |  |  |  | 陈小桂 | 8h | 8h |
| 45 | 1.1.9.4 | 整合购买撤销 | manual | 1d | 2017-09-15 A | 2017-09-15 A |  | 100% |  |  |  | 陈小桂 | 8h | 8h |
| 46 | 1.1.9.5 | 调整打印 | manual | 1d | 2017-09-15 A | 2017-09-15 A |  | 100% |  |  |  | 陈小桂 | 8h | 8h |
| 47 | 1.1.9.6 | 卡券购买增加搜索功能 | manual | 1d | 2017-09-25 | 2017-09-25 |  |  |  |  |  | 陈小桂 | 8h |  |
| 48 | 1.1.10 | **费用类型可多选处理** |  | 3d | 2017-09-18 A | 2017-09-20 A |  | 100% |  |  |  | 陈小桂 | 48h | 48h |
| 49 | 1.1.10.1 | 关闭自动结算 | manual | 1d | 2017-09-18 A | 2017-09-18 A |  | 100% |  |  |  | 陈小桂 | 8h | 8h |
| 50 | 1.1.10.2 | 卡券基础信息调整-增加服用类型多选功能 | manual | 0.5d | 2017-09-19 A | 2017-09-19 A |  | 100% |  |  |  | 陈小桂 | 4h | 4h |
| 51 | 1.1.10.3 | 会员储值设置-费用类型多选 | manual | 0.5d | 2017-09-19 A | 2017-09-19 A |  | 100% |  |  |  | 陈小桂 | 4h | 4h |
| 52 | 1.1.10.4 | 结算是对费用类型多选进行处理 | manual | 1d | 2017-09-20 A | 2017-09-20 A |  | 100% |  |  |  | 陈小桂 | 8h | 8h |
| 53 | 1.1.11 | **会员模块字段增加** |  | 1d | 2017-09-05 A | 2017-09-05 |  | 47% | 0.53d |  |  | 梁廷森 | 84h | 36h |
| 54 | 1.1.11.1 | 与文芳确定字段项（微信端、管理后台） | manual | 1d | 2017-09-18 A | 2017-09-18 A |  | 100% |  |  |  | 梁廷森 | 8h | 8h |
| 55 | 1.1.11.2 | 对字段进行增加 | manual | 2d | 2017-09-18 | 2017-09-19 |  |  |  |  |  | 梁廷森 | 16h |  |
| 56 | 1.1.11.3 | 会员详情---基础信息 | manual | 0.5d | 2017-09-20 | 2017-09-20 |  |  |  |  |  | 梁廷森 | 4h |  |
| 57 | 1.1.11.4 | 会员详情--车辆信息 | manual | 0.5d | 2017-09-20 | 2017-09-20 |  |  |  |  |  | 梁廷森 | 4h |  |
| 58 | 1.1.11.5 | 会员详情---积分信息 | manual | 1d | 2017-09-05 A | 2017-09-05 A |  | 100% |  |  |  | 张籽娟 | 8h | 8h |
| 59 | 1.1.11.6 | 会员详情--卡券信息 | manual | 1d | 2017-09-05 A | 2017-09-05 A |  | 100% |  |  |  | 张籽娟 | 8h | 8h |
| 60 | 1.1.11.7 | 会员详情--储值信息 | manual | 0.5d | 2017-09-19 A | 2017-09-19 A |  | 100% |  |  |  | 张籽娟 | 4h | 4h |
| 61 | 1.1.11.8 | 会员详情--购买记录 | manual | 1d | 2017-09-05 A | 2017-09-05 A |  | 100% |  |  |  | 张籽娟 | 8h | 8h |
| 62 | 1.1.11.9 | 会员详情--高级查询 | manual | 2d | 2017-10-09 | 2017-10-10 |  |  |  |  |  | 张籽娟 | 16h |  |
| 63 | 1.1.12 | **运通汇个人中心调整** |  | 2d | 2017-09-21 | 2017-09-22 |  |  |  |  | 0d |  | 16h |  |
| 64 | 1.1.12.1 | 个人中心接口的开发 | manual | 0.5d | 2017-09-21 | 2017-09-21 |  |  |  |  |  | 梁廷森 | 4h |  |
| 65 | 1.1.12.2 | 个人中心界面对接 | manual | 0.5d | 2017-09-21 | 2017-09-21 |  |  |  |  |  | 梁廷森 | 4h |  |
| 66 | 1.1.12.3 | 调试测试 | manual | 1d | 2017-09-22 | 2017-09-22 |  |  |  |  |  | 梁廷森 | 8h |  |

| ID | WBS | Task | Type | Duration | Start | Finish | Complete | Remaining | Total slack | Resources | Work | Actual work |
| --- | --- | --- | --- | --- | --- | --- | --- | --- | --- | --- | --- | --- |
| 67 | 1.2 | **消费结账调整** |  | 5d | 2017-09-21 | 2017-09-27 |  |  | 0d |  | 48h |  |
| 68 | 1.2.1 | 增加服务顾问添加消费结账 | manual | 3d | 2017-09-21 | 2017-09-25 |  |  |  | 陈小桂 | 24h |  |
| 69 | 1.2.2 | 财务确认消费结账 | manual | 1d | 2017-09-26 | 2017-09-26 |  |  |  | 陈小桂 | 8h |  |
| 70 | 1.2.3 | 财务撤回操作 | manual | 1d | 2017-09-27 | 2017-09-27 |  |  |  | 陈小桂 | 8h |  |
| 71 | 1.2.4 | 调整结算打印功能 | manual | 1d | 2017-09-27 | 2017-09-27 |  |  |  | 陈小桂 | 8h |  |
| 72 | 1.3 | **规则定时任务** |  | 34d | 2017-08-15 A | 2017-09-29 | 89% | 3.58d | 0d |  | 168h | 136h |
| 73 | 1.3.1 | 会员卡券过期更新 | manual | 1d | 2017-08-15 A | 2017-08-15 A | 100% |  |  | 王大鹏 | 8h | 8h |
| 74 | 1.3.2 | 会员积分过期更新 | manual | 1d | 2017-08-15 A | 2017-08-15 A | 100% |  |  | 王大鹏 | 8h | 8h |
| 75 | 1.3.3 | 会员储值过期更新 | manual | 1d | 2017-08-15 A | 2017-08-15 A | 100% |  |  | 王大鹏 | 8h | 8h |
| 76 | 1.3.4 | 会员升级定时任务 | manual | 1d | 2017-08-15 A | 2017-08-15 A | 100% |  |  | 王大鹏 | 8h | 8h |
| 77 | 1.3.5 | 会员降级定时任务 | manual | 1d | 2017-08-15 A | 2017-08-15 A | 100% |  |  | 王大鹏 | 8h | 8h |
| 78 | 1.3.6 | 会员权益定时任务 | manual | 1d | 2017-08-15 A | 2017-08-15 A | 100% |  |  | 王大鹏 | 8h | 8h |
| 79 | 1.3.7 | 会员卡券到期提醒 | manual | 1d | 2017-08-15 A | 2017-08-15 A | 100% |  |  | 王大鹏 | 8h | 8h |
| 80 | 1.3.8 | 会员积分到期提醒 | manual | 1d | 2017-08-15 A | 2017-08-15 A | 100% |  |  | 王大鹏 | 8h | 8h |
| 81 | 1.3.9 | 会员生日到期提醒 | manual | 1d | 2017-08-15 A | 2017-08-15 A | 100% |  |  | 王大鹏 | 8h | 8h |
| 82 | 1.3.10 | 会员储值到期提醒 | manual | 1d | 2017-08-15 A | 2017-08-15 A | 100% |  |  | 王大鹏 | 8h | 8h |
| 83 | 1.3.11 | 会员首保到期提醒 | manual | 1d | 2017-08-21 A | 2017-08-21 A | 100% |  |  | 王大鹏 | 8h | 8h |
| 84 | 1.3.12 | 会员保养到期提醒 | manual | 1d | 2017-08-21 A | 2017-08-21 A | 100% |  |  | 王大鹏 | 8h | 8h |
| 85 | 1.3.13 | 会员保险到期提醒 | manual | 1d | 2017-08-21 A | 2017-08-21 A | 100% |  |  | 王大鹏 | 8h | 8h |
| 86 | 1.3.14 | 驾照年审到期提醒 | manual | 1d | 2017-08-22 A | 2017-08-22 A | 100% |  |  | 王大鹏 | 8h | 8h |
| 87 | 1.3.15 | 车辆年检到期提醒 | manual | 1d | 2017-08-22 A | 2017-08-22 A | 100% |  |  | 王大鹏 | 8h | 8h |
| 88 | 1.3.16 | 会员购买提醒 | manual | 1d | 2017-09-28 | 2017-09-28 |  |  |  | 王大鹏; 陈小桂 | 16h |  |
| 89 | 1.3.17 | 会员消费结账（问卷调查） | manual | 1d | 2017-09-29 | 2017-09-29 |  |  |  | 王大鹏; 陈小桂 | 16h |  |
| 90 | 1.3.18 | 自定义天数提醒 | manual | 2d | 2017-09-05 A | 2017-09-06 A | 100% |  |  | 王大鹏 | 16h | 16h |

| ID | WBS | Task | Type | Duration | Start | Finish | Complete | Remaining | Total slack | Resources | Work | Actual work |
| --- | --- | --- | --- | --- | --- | --- | --- | --- | --- | --- | --- | --- |
| 91 | 2 | **商周数据导入** |  | 1d | 2017-08-16 A | 2017-08-16 A | 100% |  |  |  | 32h | 32h |
| 92 | 2.1 | 北京博恩商周数据导入 | manual | 1d | 2017-08-16 A | 2017-08-16 A | 100% |  |  | 梁廷森 | 8h | 8h |
| 93 | 2.2 | 陕西瑞迪商周数据初始化导出 | manual | 0.5d | 2017-08-16 A | 2017-08-16 A | 100% |  |  | 梁廷森 | 4h | 4h |
| 94 | 2.3 | 陕西博宝商周数据初始化导出 | manual | 0.5d | 2017-08-16 A | 2017-08-16 A | 100% |  |  | 梁廷森 | 4h | 4h |
| 95 | 2.4 | 陕西瑞捷商周数据初始化导出 | manual | 0.5d | 2017-08-16 A | 2017-08-16 A | 100% |  |  | 梁廷森 | 4h | 4h |
| 96 | 2.5 | 陕西瑞迪商周数据核实导入 | manual | 0.5d | 2017-08-16 A | 2017-08-16 A | 100% |  |  | 梁廷森 | 4h | 4h |
| 97 | 2.6 | 陕西博宝商周数据核实导入 | manual | 0.5d | 2017-08-16 A | 2017-08-16 A | 100% |  |  | 梁廷森 | 4h | 4h |
| 98 | 2.7 | 陕西瑞捷商周数据核实导入 | manual | 0.5d | 2017-08-16 A | 2017-08-16 A | 100% |  |  | 梁廷森 | 4h | 4h |
| 99 | 3 | **业务报表开发** |  | 15d | 2017-09-11 | 2017-09-29 |  |  | 0d |  | 120h |  |
| 100 | 3.1 | **运通汇系统客服业务报表-经销店** |  | 11d | 2017-09-15 | 2017-09-29 |  |  | 0d |  | 56h |  |
| 101 | 3.1.1 | 事业部客服经理-会员管理报表 | manual | 2d | 2017-09-28 | 2017-09-29 |  |  |  | 张籽娟 | 16h |  |
| 102 | 3.1.2 | 经销店客服-会员权益列表 | manual | 2d | 2017-09-15 | 2017-09-18 |  |  |  | 张籽娟 | 16h |  |
| 103 | 3.1.3 | 经销店客服-会员权益统计 | manual | 3d | 2017-09-25 | 2017-09-27 |  |  |  | 张籽娟 | 24h |  |
| 104 | 3.2 | **运通汇报表** |  | 1d | 2017-09-11 | 2017-09-11 |  |  |  |  | 64h |  |
| 105 | 3.2.1 | **财务统计报表** |  | 1d | 2017-09-11 | 2017-09-11 |  |  |  |  | 64h |  |
| 106 | 3.2.1.1 | 会员权益列表 | manual | 3d | 2017-09-11 | 2017-09-13 |  |  |  | 张籽娟 | 24h |  |
| 107 | 3.2.1.2 | 会员权益统计 | manual | 3d | 2017-09-20 | 2017-09-22 |  |  |  | 张籽娟 | 24h |  |
| 108 | 3.2.1.3 | 运通汇会员管理模块报表-财务统计 | manual | 2d | 2017-09-11 | 2017-09-12 |  |  |  | 梁廷森 | 16h |  |
| 109 | 4 | **云之家轻应用开发** |  | 32d | 2017-08-07 A | 2017-09-19 | 87% | 4.17d | 0d |  | 260h | 244h |
| 110 | 4.1 | 投诉建议应用开发 | manual | 5d | 2017-08-07 A | 2017-08-11 A | 100% |  |  |  |  |  |
| 111 | 4.2 | **开票信息应用开发** |  | 6d | 2017-08-16 A | 2017-08-23 A | 100% |  |  | 李凯 | 120h | 120h |
| 112 | 4.2.1 | 接口开发 | manual | 2d | 2017-08-16 A | 2017-08-17 A | 100% |  |  | 李凯 | 16h | 16h |
| 113 | 4.2.2 | 界面开发 | manual | 2d | 2017-08-18 A | 2017-08-21 A | 100% |  |  | 李凯; 郭婷 | 32h | 32h |
| 114 | 4.2.3 | 界面接口调试 | manual | 1d | 2017-08-22 A | 2017-08-22 A | 100% |  |  | 李凯; 郭婷 | 16h | 16h |
| 115 | 4.2.4 | 测试上线 | manual | 1d | 2017-08-23 A | 2017-08-23 A | 100% |  |  | 文栎波 | 8h | 8h |

| ID | WBS | Task | Type | Duration | Start | Finish | Complete | Remaining | Total slack | Resources | Work | Actual work |
| --- | --- | --- | --- | --- | --- | --- | --- | --- | --- | --- | --- | --- |
| 116 | 4.3 | **电子名片应用开发** |  | 26d | 2017-08-15 A | 2017-09-19 | 90% | 2.6d | 0d |  | 140h | 124h |
| 117 | 4.3.1 | 接口开发 | manual | 2d | 2017-08-15 A | 2017-08-16 A | 100% |  |  | 李凯 | 16h | 16h |
| 118 | 4.3.2 | 界面开发 | manual | 1d | 2017-08-25 A | 2017-08-25 A | 100% |  |  | 郭婷 | 8h | 8h |
| 119 | 4.3.3 | 界面接口调试 | manual | 1d | 2017-08-28 A | 2017-08-28 A | 100% |  |  | 郭婷; 李凯 | 16h | 16h |
| 120 | 4.3.4 | 增加用户新增功能 | manual | 1d | 2017-09-04 A | 2017-09-04 A | 100% |  |  | 郭婷; 李凯 | 16h | 16h |
| 121 | 4.3.5 | 增加审批处理 | manual | 1d | 2017-09-05 A | 2017-09-05 A | 100% |  |  | 李凯 | 8h | 8h |
| 122 | 4.3.6 | 测试上线 | manual | 1d | 2017-09-06 A | 2017-09-06 A | 100% |  |  | 文栎波; 郭婷; 李凯 | 24h | 24h |
| 123 | 4.3.7 | 图片切图接口 | manual | 0.5d | 2017-09-15 A | 2017-09-15 A | 100% |  |  | 李凯 | 4h | 4h |
| 124 | 4.3.8 | 切图测试 | manual | 0.5d | 2017-09-15 A | 2017-09-15 A | 100% |  |  | 郭婷; 李凯 | 8h | 8h |
| 125 | 4.3.9 | 切图及电子名片调整后上线 | manual | 1d | 2017-09-18 A | 2017-09-18 A | 100% |  |  | 郭婷; 李凯; 文栎波 | 24h | 24h |
| 126 | 4.3.10 | 通知行政（包括使用方法） | manual | 1d | 2017-09-19 | 2017-09-19 |  |  |  | 付陈林; 文栎波 | 16h |  |
| 127 | 4.4 | 审批消息列表展示 | manual | 1d? | 2017-08-07 | 2017-08-07 |  |  |  |  |  |  |
| 128 | 4.5 | 云之家审批代办消息提醒 | manual | 1d? | 2017-08-07 | 2017-08-07 |  |  |  |  |  |  |
| 129 | 5 | **bug修改** |  | 29d | 2017-08-15 A | 2017-09-22 | 72% | 8.18d | 0d |  | 156h | 112h |
| 130 | 5.1 | 温州欣奥会员导入 | manual | 1d | 2017-08-15 A | 2017-08-15 A | 100% |  |  | 梁廷森 | 8h | 8h |
| 131 | 5.2 | 重庆汇捷无限卡券显示为单次问题 | manual | 1d | 2017-08-21 A | 2017-08-21 A | 100% |  |  | 陈小桂 | 8h | 8h |
| 132 | 5.3 | 北京兴奥无法结算问题 | manual | 1d | 2017-08-21 A | 2017-08-21 A | 100% |  |  | 陈小桂 | 8h | 8h |
| 133 | 5.4 | 服务类型关闭 | manual | 1d | 2017-08-30 A | 2017-08-30 A | 100% |  |  | 张籽娟 | 8h | 8h |
| 134 | 5.5 | 条件参数，本次实付工时费,本次实付材料费、本次实付金额 | manual | 1d | 2017-08-29 A | 2017-08-29 A | 100% |  |  | 梁廷森 | 8h | 8h |
| 135 | 5.6 | 积分调整类型， 增加一个调整金额。 | manual | 1d | 2017-08-29 A | 2017-08-29 A | 100% |  |  | 李凯 | 8h | 8h |
| 136 | 5.7 | 积分抵现规则，修改名称 积分单次最高使用比例、积分抵现比例 | manual | 1d | 2017-08-28 A | 2017-08-28 A | 100% |  |  | 张籽娟 | 8h | 8h |
| 137 | 5.8 | 卡券设置 服务类型可多选、卡券分类可以修改 | manual | 2d | 2017-08-29 | 2017-08-30 |  |  |  | 张籽娟 | 16h |  |
| 138 | 5.9 | 会员套餐，卡券售卖价变更成为单张售卖价 | manual | 1d | 2017-08-28 A | 2017-08-28 A | 100% |  |  | 张籽娟 | 8h | 8h |
| 139 | 5.10 | 添加会员时。存在错别字，，为 | manual | 1d | 2017-08-28 A | 2017-08-28 A | 100% |  |  | 张籽娟 | 8h | 8h |
| 140 | 5.11 | 消费结账 默认已开票 | manual | 2d | 2017-08-28 A | 2017-08-29 A | 100% |  |  | 陈小桂 | 16h | 16h |
| 141 | 5.12 | (微信申请临时会员)客户在注册运通汇的时候 客户姓名和出生年月日都要输入两次 如果先输入了姓名和生日 再去绑定车辆的话 出来的界面就又要输入生日姓名，能否操作简化 | manual | 1d | 2017-08-15 A | 2017-08-15 A | 100% |  |  | 梁廷森 | 8h | 8h |
| 142 | 5.13 | （供应商扫码记录）第三方供应商扫码记录，是否可以在后面显示操作人；不然无法统计操作数量，扫码人 | manual | 1d | 2017-09-15 | 2017-09-15 |  |  |  | 李凯 | 8h |  |
| 143 | 5.14 | (会员消息模板)给客户发送提醒短信，设置好了，但是没有发送出去； | manual | 1d | 2017-08-15 A | 2017-08-15 A | 100% |  |  | 王大鹏 | 8h | 8h |
| 144 | 5.15 | (卡券设置)由于车主和会员注册人（用车人）有可能不是同一人，手机号也不一致，选择会员界面需要添加底盘号或车主姓名，以便快速准确找到客户 | manual | 1d | 2017-08-15 | 2017-08-15 |  |  |  | 陈小桂 | 8h |  |
| 145 | 5.16 | (会员管理条件参数)需要添加两个条件参数，“近一年消费金额”、“累计消费金额”、“服务类别”——（保养、维修、事故理赔、索赔、首保、召回、其他） | manual | 1d | 2017-08-15 A | 2017-08-15 A | 100% |  |  | 付陈林 | 8h | 8h |
| 146 | 5.17 | 1、运通生活：活动管理状态，招募中和活动中所显示的活动不全2、活动上传时的限制人数，只能填写人数和选择不限制，不能空白。3、活动费用，如果是0元，选择免费，不允许写0元，客户支付不了。 | manual | 1d | 2017-09-22 | 2017-09-22 |  |  |  | 梁廷森 | 8h |  |
| 147 | 5.18 | 卡券购买 餐券和洗浴券消积分后，增加此单据打印 | manual | 0.5d | 2017-09-20 | 2017-09-20 |  |  |  | 陈小桂 | 4h |  |

| ID | WBS | Task | Type | Duration | Start | Finish | Predecessors | Complete | Remaining | Constraint | Resources | Work | Actual work |
| --- | --- | --- | --- | --- | --- | --- | --- | --- | --- | --- | --- | --- | --- |
| 148 | 6 | **高可用系统框架** |  | 8d | 2017-08-14 A | 2017-08-23 |  | 50% | 4d |  |  | 120h | 62.4h |
| 149 | 6.1 | **方案整理** |  | 8d | 2017-08-14 A | 2017-08-23 |  | 60% | 3.2d |  | 王大鹏 | 120h | 62.4h |
| 150 | 6.1.1 | 方案制定 | manual | 3d | 2017-08-14 A | 2017-08-16 A |  | 100% |  |  | 王大鹏 | 24h | 24h |
| 151 | 6.1.2 | 方案讨论 | manual | 1d | 2017-08-21 | 2017-08-21 |  |  |  |  | 付陈林; 王大鹏 | 16h |  |
| 152 | 6.1.3 | 方案确认 | manual | 1d | 2017-08-23 | 2017-08-23 |  |  |  |  | 付陈林; 王大鹏 | 16h |  |
| 153 | 6.2 | 方案实施 | manual | 1d? | 2017-08-14 | 2017-08-14 |  |  |  |  |  |  |  |
| 154 | 7 | **财务系统开票明细** |  | 1d | 2017-08-16 | 2017-08-16 |  |  |  |  |  | 8h |  |
| 155 | 7.1 | DSM数据对接调研 | manual | 1d | 2017-08-16 | 2017-08-16 |  |  |  |  | 付陈林 | 8h |  |
| 156 | 8 | **商城系统开发** |  | 15d | 2017-09-06 A | 2017-09-26 |  | 36% | 9.58d |  |  | 208h | 132h |
| 157 | 8.1 | **商城需求调研** |  | 5d | 2017-09-06 A | 2017-09-12 A |  | 100% |  |  |  | 120h | 120h |
| 158 | 8.1.1 | 客服委员会需求调研 | manual | 3d | 2017-09-06 A | 2017-09-08 A | 159 | 100% |  | start no earlier than 2017-09-06 | 付陈林; 文栎波; 杨建 | 72h | 72h |
| 159 | 8.1.2 | 用品需求调研 | manual | 2d | 2017-09-11 A | 2017-09-12 A |  | 100% |  |  | 付陈林; 杨建; 文栎波 | 48h | 48h |
| 160 | 8.2 | **商城设计** |  | 6d | 2017-09-14 A | 2017-09-21 |  | 14% | 5.18d |  |  | 88h | 12h |
| 161 | 8.2.1 | 前端UI设计 | manual | 3d | 2017-09-14 | 2017-09-18 |  |  |  |  | 杨建 | 24h |  |
| 162 | 8.2.2 | 后台原型设计 | manual | 3d | 2017-09-14 A | 2017-09-18 |  | 50% | 1.5d |  | 付陈林 | 24h | 12h |
| 163 | 8.2.3 | 业务表结构设计 | manual | 2d | 2017-09-19 | 2017-09-20 |  |  |  |  | 付陈林 | 16h |  |
| 164 | 8.2.4 | 前端设计讨论确定 | manual | 1d | 2017-09-18 | 2017-09-18 |  |  |  |  | 杨建 | 8h |  |
| 165 | 8.2.5 | 后台原型设计讨论确定 | manual | 1d | 2017-09-21 | 2017-09-21 |  |  |  |  | 付陈林 | 8h |  |
| 166 | 8.2.6 | 业务表结构讨论确定 | manual | 1d | 2017-09-21 | 2017-09-21 |  |  |  |  | 付陈林 | 8h |  |
| 167 | 8.3 | 商城开发 | manual | 1d? | 2017-09-06 | 2017-09-06 |  |  |  |  |  |  |  |
| 168 | 8.4 | 商城测试上线 | manual | 1d? | 2017-09-06 | 2017-09-06 |  |  |  |  |  |  |  |
| 169 | 9 | **太平洋保险接口对接** |  | 25d | 2017-08-31 A | 2017-10-04 |  | 80% | 4.88d |  |  | 164h | 132h |
| 170 | 9.1 | 接口加密加签 | manual | 1d | 2017-08-31 A | 2017-08-31 A |  | 100% |  |  | 王大鹏 | 8h | 8h |
| 171 | 9.2 | 车型查询 | manual | 1d | 2017-09-01 A | 2017-09-01 A |  | 100% |  |  | 王大鹏 | 8h | 8h |
| 172 | 9.3 | 行业车型查询 | manual | 1d | 2017-09-04 A | 2017-09-04 A |  | 100% |  |  | 王大鹏 | 8h | 8h |
| 173 | 9.4 | 保费计算 | manual | 1.5d | 2017-09-07 A | 2017-09-08 A |  | 100% |  |  | 王大鹏 | 12h | 12h |
| 174 | 9.5 | 预核保提交 | manual | 1.5d | 2017-09-08 A | 2017-09-11 A |  | 100% |  |  | 王大鹏 | 12h | 12h |
| 175 | 9.6 | 核保提交 | manual | 1d | 2017-09-12 A | 2017-09-12 A |  | 100% |  |  | 王大鹏 | 8h | 8h |
| 176 | 9.7 | 提交两核 | manual | 1.5d | 2017-09-13 A | 2017-09-14 A |  | 100% |  |  | 王大鹏 | 12h | 12h |
| 177 | 9.8 | 支付申请 | manual | 2d | 2017-09-14 A | 2017-09-15 A |  | 100% |  |  | 王大鹏 | 16h | 16h |
| 178 | 9.9 | 支付申请作废 | manual | 1d | 2017-09-19 A | 2017-09-19 |  | 75% | 0.25d |  | 王大鹏 | 8h | 6h |
| 179 | 9.10 | 保单误核删除 | manual | 1d | 2017-09-20 A | 2017-09-20 |  | 75% | 0.25d |  | 王大鹏 | 8h | 6h |
| 180 | 9.11 | 手工签发 | manual | 1d | 2017-09-21 A | 2017-09-21 |  | 75% | 0.25d |  | 王大鹏 | 8h | 6h |
| 181 | 9.12 | 北京电子保单补发 | manual | 1d | 2017-09-22 A | 2017-09-22 |  | 75% | 0.25d |  | 王大鹏 | 8h | 6h |
| 182 | 9.13 | 北京身份证采集 | manual | 1d | 2017-09-25 A | 2017-09-25 |  | 75% | 0.25d |  | 王大鹏 | 8h | 6h |
| 183 | 9.14 | 北京身份采集验证码更新 | manual | 1d | 2017-09-26 A | 2017-09-26 |  | 75% | 0.25d |  | 王大鹏 | 8h | 6h |
| 184 | 9.15 | 北京新车备案 | manual | 1d | 2017-09-27 A | 2017-09-27 |  | 75% | 0.25d |  | 王大鹏 | 8h | 6h |
| 185 | 9.16 | 北京电子投保单短信确认接口 | manual | 1d | 2017-09-28 A | 2017-09-28 |  | 75% | 0.25d |  | 王大鹏 | 8h | 6h |
| 186 | 9.17 | 人工核保结果回调接口（合作伙伴实现） | manual | 1d | 2017-09-29 | 2017-09-29 |  |  |  |  | 王大鹏 | 8h |  |
| 187 | 9.18 | 保单生效回调接口（合作伙伴实现） | manual | 1d | 2017-10-03 | 2017-10-03 |  |  |  |  | 王大鹏 | 8h |  |

| ID | WBS | Task | Type | Duration | Start | Finish | Complete | Actual finish | Resources | Work | Actual work |
| --- | --- | --- | --- | --- | --- | --- | --- | --- | --- | --- | --- |
| 188 | 10 | **校园招聘** |  | 1d | 2017-09-15 A | 2017-09-15 | 100% | 2017-09-21 |  | 76h | 76h |
| 189 | 10.1 | UI设计 | manual | 2d | 2017-09-15 A | 2017-09-18 A | 100% |  | 买晨雨; 杨建 | 32h | 32h |
| 190 | 10.2 | 前两个界面前端设计 | manual | 2d | 2017-09-15 A | 2017-09-18 A | 100% |  | 文栎波 | 16h | 16h |
| 191 | 10.3 | 后三界面前端设计 | manual | 1.5d | 2017-09-19 A | 2017-09-20 A | 100% |  | 文栎波 | 12h | 12h |
| 192 | 10.4 | 校园招聘前端整体设计 | manual | 0.5d | 2017-09-20 A | 2017-09-20 A | 100% |  | 郭婷; 文栎波 | 8h | 8h |
| 193 | 10.5 | 整体流程测试 | manual | 1d | 2017-09-21 A | 2017-09-21 A | 100% |  | 郭婷 | 8h | 8h |
